# Projeto do centro de convenções

Schedule from MS Project, 2016-10-03 to 2017-02-22, costs in $.
MonteVista Solutions, Inc.

## Calendars

- Standard: Mon-Fri 08:00-12:00, 13:00-17:00; Sat-Sun off.

## Resources

| Resource | Rate |
| --- | --- |
| PM | 150 |
| PM Assistant | 100 |
| Conf Ctr Director | 150 |
| IT Director | 150 |
| IT Lead | 100 |
| IT Contractor | 100 |
| Construction Team | 60 |
| Equipment |  |
| Designer | 150 |

## Schedule

| ID | WBS | Task | Type | Duration | Start | Finish | Predecessors | Total slack | Free slack | Resources | Work | Cost |
| --- | --- | --- | --- | --- | --- | --- | --- | --- | --- | --- | --- | --- |
| 1 | 1 | Iniciar projeto | milestone | 0d | 2016-10-03 | 2016-10-03 |  | 0d |  |  |  |  |
| 2 | 2 | **Modernizar os equipamentos do centro de convenções** |  | 103d | 2016-10-03 | 2017-02-22 |  | 0d |  |  | 2938h | 654,200 |
| 3 | 2.1 | **Modernizar a tecnologia do centro de convenções** |  | 103d | 2016-10-03 | 2017-02-22 |  | 0d |  |  | 882h | 518,600 |
| 4 | 2.1.1 | Especificar requisitos |  | 2w | 2016-10-03 | 2016-10-14 | 1 | 0d |  | IT Lead [25%] | 20h | 2,000 |
| 5 | 2.1.2 | **Contrato com fornecedor** |  | 16d | 2016-10-17 | 2016-11-07 |  | 0d |  |  | 8h | 1,200 |
| 6 | 2.1.2.1 | Obter propostas |  | 1w | 2016-10-17 | 2016-10-21 | 4 | 0d |  | Conf Ctr Director [5%] | 2h | 300 |
| 7 | 2.1.2.2 | Selecionar fornecedor |  | 5d | 2016-10-24 | 2016-10-28 | 6 | 0d |  | Conf Ctr Director [5%] | 2h | 300 |
| 8 | 2.1.2.3 | Negociar |  | 5d | 2016-10-31 | 2016-11-04 | 7 | 0d |  | Conf Ctr Director [10%] | 4h | 600 |
| 9 | 2.1.2.4 | Assinar contratos |  | 1d | 2016-11-07 | 2016-11-07 | 8 | 0d |  |  |  |  |
| 10 | 2.1.3 | Projetar modernização |  | 1w | 2016-11-08 | 2016-11-14 | 9 | 0d |  | IT Contractor [75%] | 30h | 3,000 |
| 11 | 2.1.4 | Design do centro de convenções concluído | milestone | 0d | 2016-11-14 | 2016-11-14 | 10 | 72d |  |  |  |  |
| 12 | 2.1.5 | **Instalar tecnologia** |  | 20d | 2017-01-26 | 2017-02-22 |  | 0d |  |  | 824h | 512,400 |
| 13 | 2.1.5.1 | Instalar cabos |  | 1w | 2017-01-26 | 2017-02-01 | 10, 23 | 0d |  | IT Contractor [500%] | 200h | 20,000 |
| 14 | 2.1.5.2 | Configurar racks de equipamentos |  | 2d | 2017-02-02 | 2017-02-03 | 13 | 0d |  | IT Contractor [500%]; Equipment [0.1%] | 80h | 38,000 |
| 15 | 2.1.5.3 | Instalar equipamentos |  | 3d | 2017-02-06 | 2017-02-08 | 14 | 0d |  | IT Contractor [500%]; Equipment [0.1%] | 120h | 412,000 |
| 16 | 2.1.5.4 | Configurar equipamentos |  | 4d | 2017-02-09 | 2017-02-14 | 15 | 0d |  | IT Contractor [500%] | 160h | 16,000 |
| 17 | 2.1.5.5 | Conectar à rede |  | 3d | 2017-02-15 | 2017-02-17 | 16 | 0d |  | IT Contractor [500%] | 120h | 12,000 |
| 18 | 2.1.5.6 | Teste |  | 3d | 2017-02-20 | 2017-02-22 | 17 | 0d |  | IT Contractor [500%]; IT Lead | 144h | 14,400 |
| 19 | 2.2 | Tecnologia instalada | milestone | 0d | 2017-02-22 | 2017-02-22 | 18 | 0d |  |  |  |  |
| 20 | 2.3 | **Remodelar espaços** |  | 52d | 2016-11-15 | 2017-01-25 |  | 0d |  |  | 2056h | 135,600 |
| 21 | 2.3.1 | Projetar espaços |  | 4w | 2016-11-15 | 2016-12-12 | 10 | 0d |  | Designer [75%] | 120h | 18,000 |
| 22 | 2.3.2 | Construir |  | 6w | 2016-12-13 | 2017-01-23 | 21 | 0d |  | Construction Team [800%] | 1920h | 115,200 |
| 23 | 2.3.3 | Concluir passo-a-passo |  | 2d | 2017-01-24 | 2017-01-25 | 22 | 0d |  | Conf Ctr Director | 16h | 2,400 |
| 24 | 3 | **Modernizar tecnologia dos quartos do hotel** |  | 103d | 2016-10-03 | 2017-02-22 |  | 0d |  |  | 1250h | 626,000 |
| 25 | 3.1 | Especificar requisitos |  | 2w | 2016-10-03 | 2016-10-14 | 4SS | 38d | 0d | Conf Ctr Director [20%] | 16h | 2,400 |
| 26 | 3.2 | Contrato com fornecedor |  | 4w | 2016-10-17 | 2016-11-11 | 25 | 38d | 0d | Conf Ctr Director [2.5%] | 4h | 600 |
| 27 | 3.3 | Projetar modernização |  | 1w | 2016-11-14 | 2016-11-18 | 26 | 38d | 0d | IT Contractor [75%] | 30h | 3,000 |
| 28 | 3.4 | Instalar tecnologia |  | 6w | 2016-11-21 | 2016-12-30 | 27 | 38d |  | IT Contractor [500%]; Equipment [0.1%] | 1200h | 620,000 |
| 29 | 3.5 | Projeto concluído | milestone | 0d | 2017-02-22 | 2017-02-22 | 28, 18 | 0d |  |  |  |  |
