# Projeto do centro de convenções

Schedule from MS Project, 2016-10-03 to 2017-02-23, costs in $, A marks actual dates.
MonteVista Solutions, Inc.

## Calendars

- Standard: Mon-Fri 08:00-12:00, 13:00-17:00; Sat-Sun off.

## Resources

| Resource | Rate |
| --- | --- |
| PM | 150 |
| PM Assistant | 100 |
| Conf Ctr Director | 150 |
| IT Director | 150 |
| IT Lead | 100 |
| IT Contractor | 100 |
| Construction Team | 60 |
| Equipment |  |
| Designer | 150 |
| Materials |  |

## Schedule

| ID | WBS | Task | Type | Duration | Start | Finish | Predecessors | Complete | Remaining | Baseline start | Baseline finish | Baseline duration | Total slack | Free slack | Resources | Work | Cost | Baseline cost |
| --- | --- | --- | --- | --- | --- | --- | --- | --- | --- | --- | --- | --- | --- | --- | --- | --- | --- | --- |
| 1 | 1 | Iniciar projeto | milestone | 0d | 2016-10-03 | 2016-10-03 |  |  |  | 2016-10-03 | 2016-10-03 | 0d | 0d |  |  |  |  |  |
| 2 | 2 | **Atualizar o centro de convenções** |  | 104d | 2016-10-03 A | 2017-02-23 |  |  | 104d | 2016-10-03 | 2017-02-23 | 104d | 0d |  |  | 3073.2h | 917,680 | 917,680 |
| 3 | 2.1 | **Atualizar a tecnologia do centro de convenções** |  | 104d | 2016-10-03 A | 2017-02-23 |  |  | 104d | 2016-10-03 | 2017-02-23 | 104d | 0d |  |  | 1017.2h | 532,080 | 532,080 |
| 4 | 2.1.1 | Especificar requisitos |  | 2w | 2016-10-03 | 2016-10-14 | 1 |  |  | 2016-10-03 | 2016-10-14 | 2w | 0d |  | IT Lead [25%] | 20h | 2,000 | 2,000 |
| 5 | 2.1.2 | **Contrato com fornecedor** |  | 14d | 2016-10-17 | 2016-11-03 |  |  |  | 2016-10-17 | 2016-11-03 | 14d | 0d |  |  | 7.2h | 1,080 | 1,080 |
| 6 | 2.1.2.1 | Obter propostas |  | 1w | 2016-10-17 | 2016-10-21 | 4 |  |  | 2016-10-17 | 2016-10-21 | 1w | 0d |  | Conf Ctr Director [5%] | 2h | 300 | 300 |
| 7 | 2.1.2.2 | Escolher fornecedores |  | 3d | 2016-10-24 | 2016-10-26 | 6 |  |  | 2016-10-24 | 2016-10-26 | 3d | 0d |  | Conf Ctr Director [5%] | 1.2h | 180 | 180 |
| 8 | 2.1.2.3 | Negociar |  | 5d | 2016-10-27 | 2016-11-02 | 7 |  |  | 2016-10-27 | 2016-11-02 | 5d | 0d |  | Conf Ctr Director [10%] | 4h | 600 | 600 |
| 9 | 2.1.2.4 | Assinar contratos |  | 1d | 2016-11-03 | 2016-11-03 | 8 |  |  | 2016-11-03 | 2016-11-03 | 1d | 0d |  |  |  |  |  |
| 10 | 2.1.3 | Projetar modernização |  | 1w | 2016-11-04 | 2016-11-10 | 9 |  |  | 2016-11-04 | 2016-11-10 | 1w | 0d |  | IT Contractor [75%] | 30h | 3,000 | 3,000 |
| 11 | 2.1.4 | Design do centro de convenções concluído | milestone | 0d | 2016-11-10 A | 2016-11-10 A | 10 | 100% |  | 2016-11-10 | 2016-11-10 | 0d |  |  |  |  |  |  |
| 12 | 2.1.5 | **Instalar tecnologia** |  | 23d | 2017-01-24 | 2017-02-23 |  |  |  | 2017-01-24 | 2017-02-23 | 23d | 0d |  |  | 960h | 526,000 | 526,000 |
| 13 | 2.1.5.1 | Instalar cabos |  | 1w | 2017-01-24 | 2017-01-30 | 10, 23 |  |  | 2017-01-24 | 2017-01-30 | 1w | 0d |  | IT Contractor [500%] | 200h | 20,000 | 20,000 |
| 14 | 2.1.5.2 | Configurar racks de equipamentos |  | 4d | 2017-01-31 | 2017-02-03 | 13 |  |  | 2017-01-31 | 2017-02-03 | 4d | 0d |  | IT Contractor [500%]; Equipment [0.1%] | 160h | 46,000 | 46,000 |
| 15 | 2.1.5.3 | Instalar equipamentos |  | 3d | 2017-02-06 | 2017-02-08 | 14 |  |  | 2017-02-06 | 2017-02-08 | 3d | 0d |  | IT Contractor [500%]; Equipment [0.1%] | 120h | 412,000 | 412,000 |
| 16 | 2.1.5.4 | Configurar equipamentos |  | 3d | 2017-02-09 | 2017-02-13 | 15 |  |  | 2017-02-09 | 2017-02-13 | 3d | 0d |  | IT Contractor [500%] | 120h | 12,000 | 12,000 |
| 17 | 2.1.5.5 | Conectar à rede |  | 3d | 2017-02-14 | 2017-02-16 | 16 |  |  | 2017-02-14 | 2017-02-16 | 3d | 0d |  | IT Contractor [500%] | 120h | 12,000 | 12,000 |
| 18 | 2.1.5.6 | Teste |  | 5d | 2017-02-17 | 2017-02-23 | 17 |  |  | 2017-02-17 | 2017-02-23 | 5d | 0d |  | IT Contractor [500%]; IT Lead | 240h | 24,000 | 24,000 |
| 19 | 2.2 | Tecnologia instalada | milestone | 0d | 2017-02-23 | 2017-02-23 | 18 |  |  | 2017-02-23 | 2017-02-23 | 0d | 0d |  |  |  |  |  |
| 20 | 2.3 | **Remodelar espaços** |  | 52d | 2016-11-11 | 2017-01-23 |  |  |  | 2016-11-11 | 2017-01-23 | 52d | 0d |  |  | 2056h | 385,600 | 385,600 |
| 21 | 2.3.1 | Projetar locais |  | 4w | 2016-11-11 | 2016-12-08 | 10 |  |  | 2016-11-11 | 2016-12-08 | 4w | 0d |  | Designer [75%] | 120h | 18,000 | 18,000 |
| 22 | 2.3.2 | Construção |  | 6w | 2016-12-09 | 2017-01-19 | 21 |  |  | 2016-12-09 | 2017-01-19 | 6w | 0d |  | Construction Team [800%]; Materials [0.1%] | 1920h | 365,200 | 365,200 |
| 23 | 2.3.3 | Concluir passo-a-passo |  | 2d | 2017-01-20 | 2017-01-23 | 22 |  |  | 2017-01-20 | 2017-01-23 | 2d | 0d |  | Conf Ctr Director | 16h | 2,400 | 2,400 |
| 24 | 3 | **Modernizar tecnologia dos quartos do hotel** |  | 65d | 2016-10-03 | 2016-12-30 |  |  |  | 2016-10-03 | 2016-12-30 | 65d | 39d |  |  | 1250h | 626,000 | 626,000 |
| 25 | 3.1 | Modernizar tecnologia dos quartos do hotel |  | 2w | 2016-10-03 | 2016-10-14 | 4SS |  |  | 2016-10-03 | 2016-10-14 | 2w | 39d | 0d | Conf Ctr Director [20%] | 16h | 2,400 | 2,400 |
| 26 | 3.2 | Contrato com fornecedor |  | 4w | 2016-10-17 | 2016-11-11 | 25 |  |  | 2016-10-17 | 2016-11-11 | 4w | 39d | 0d | Conf Ctr Director [2.5%] | 4h | 600 | 600 |
| 27 | 3.3 | Projetar modernização |  | 1w | 2016-11-14 | 2016-11-18 | 26 |  |  | 2016-11-14 | 2016-11-18 | 1w | 39d | 0d | IT Contractor [75%] | 30h | 3,000 | 3,000 |
| 28 | 3.4 | Instalar tecnologia |  | 6w | 2016-11-21 | 2016-12-30 | 27 |  |  | 2016-11-21 | 2016-12-30 | 6w | 39d |  | IT Contractor [500%]; Equipment [0.1%] | 1200h | 620,000 | 620,000 |
| 29 | 4 | Projeto concluído | milestone | 0d | 2017-02-23 | 2017-02-23 | 28, 18 |  |  | 2017-02-23 | 2017-02-23 | 0d | 0d |  |  |  |  |  |
